# WPS V1.2

Schedule from MS Project, 2020-11-01 to 2021-12-19, costs in ر.س.‏.

## Calendars

- Standard: Mon-Thu 08:00-16:00; Fri-Sat off; Sun 08:00-16:00. Exceptions (off unless hours are given): 2021-05-12 to 2021-05-20 (عيد الفطر).

## Resources

| Resource | Rate |
| --- | --- |
| PMO | 320 |
| Configuration Controller | 320 |
| PM | 320 |
| System Analyst | 320 |
| System Analyst Manager | 320 |
| Solution Architect | 320 |
| Solution Architect Team Leader | 320 |
| Demand Manager | 320 |
| Tester | 320 |
| Test Team Leader | 320 |
| QA | 320 |
| Designer Team Leader | 320 |
| UI/UX | 320 |
| DBA | 320 |
| Developer | 320 |
| Tester | 320 |
| Business Analyst |  |
| Product Owner |  |

## Schedule

| ID | WBS | Task | Duration | Start | Finish | Predecessors | Baseline start | Baseline finish | Baseline duration | Total slack | Free slack | Constraint | Resources | Work | Cost | Baseline cost |
| --- | --- | --- | --- | --- | --- | --- | --- | --- | --- | --- | --- | --- | --- | --- | --- | --- |
| 1 | 1 | **Project Name :** | 289d | 2020-11-01 | 2021-12-19 |  | 2020-11-01 | 2021-05-23 | 142d | 0d |  |  |  | 1714h | 533,120 | 1,348,800 |
| 2 | 1.1 | **Envisioing & Agile Planning** | 61d | 2021-06-13 | 2021-09-05 |  | 2020-11-01 | 2021-01-26 | 63d | 60d |  |  |  | 496h | 143,360 | 163,840 |
| 3 | 1.1.1 | **Conceive New Software Project** | 14d | 2021-06-13 | 2021-06-30 |  | 2020-11-01 | 2020-11-18 | 14d | 60d |  |  |  | 112h | 20,480 | 35,840 |
| 4 | 1.1.1.1 | Initiate Project | 1d | 2021-06-13 | 2021-06-13 |  | 2020-11-01 | 2020-11-01 | 1d | 60d | 0d | start no earlier than 2021-06-13 | Product Owner | 8h |  | 2,560 |
| 5 | 1.1.1.2 | Establish Initial Project’s Work Environment | 1d | 2021-06-14 | 2021-06-14 | 4 | 2020-11-02 | 2020-11-02 | 1d | 60d | 0d | start no earlier than 2020-11-02 | Configuration Controller | 8h | 2,560 | 2,560 |
| 6 | 1.1.1.3 | Schedule and Assign Tasks | 2d | 2021-06-15 | 2021-06-16 | 5 | 2020-11-03 | 2020-11-04 | 2d | 60d | 0d |  | PM | 16h | 5,120 | 5,120 |
| 7 | 1.1.1.4 | Define Customer Requirements | 5d | 2021-06-17 | 2021-06-23 | 6 | 2020-11-05 | 2020-11-11 | 5d | 60d | 0d |  | Business Analyst | 40h |  | 12,800 |
| 8 | 1.1.1.5 | Review Customer Requirements | 2d | 2021-06-24 | 2021-06-27 | 7 | 2020-11-12 | 2020-11-15 | 2d | 60d | 0d |  | System Analyst Manager | 16h | 5,120 | 5,120 |
| 9 | 1.1.1.6 | Evaluate Project Scope - Business Case | 3d | 2021-06-28 | 2021-06-30 | 8 | 2020-11-16 | 2020-11-18 | 3d | 60d | 0d |  | PM | 24h | 7,680 | 7,680 |
| 10 | 1.1.2 | **Plan the Software Project** | 3d | 2021-07-01 | 2021-07-05 |  | 2020-11-19 | 2020-11-23 | 3d | 60d |  |  |  | 32h | 10,240 | 10,240 |
| 11 | 1.1.2.1 | Establish Configuration Management Plan | 1d | 2021-07-01 | 2021-07-01 | 9 | 2020-11-19 | 2020-11-19 | 1d | 125d |  |  | Configuration Controller | 8h | 2,560 | 2,560 |
| 12 | 1.1.2.2 | Cearte Project Plan | 3d | 2021-07-01 | 2021-07-05 | 9 | 2020-11-19 | 2020-11-23 | 3d | 60d | 0d |  | PM | 24h | 7,680 | 7,680 |
| 13 | 1.1.3 | **Define the System** | 14d | 2021-07-06 | 2021-07-25 |  | 2020-11-24 | 2020-12-13 | 14d | 60d |  |  |  | 112h | 35,840 | 35,840 |
| 14 | 1.1.3.1 | Create Solution Architect | 5d | 2021-07-06 | 2021-07-12 | 12 | 2020-11-24 | 2020-11-30 | 5d | 60d | 0d |  | Solution Architect | 40h | 12,800 | 12,800 |
| 15 | 1.1.3.2 | Review Solution Architect | 2d | 2021-07-13 | 2021-07-14 | 14 | 2020-12-01 | 2020-12-02 | 2d | 60d | 0d |  | Solution Architect Team Leader | 16h | 5,120 | 5,120 |
| 16 | 1.1.3.3 | Create Backlog | 5d | 2021-07-15 | 2021-07-21 | 15 | 2020-12-03 | 2020-12-09 | 5d | 60d | 0d |  | System Analyst | 40h | 12,800 | 12,800 |
| 17 | 1.1.3.4 | Review Backlog | 2d | 2021-07-22 | 2021-07-25 | 16 | 2020-12-10 | 2020-12-13 | 2d | 60d | 0d |  | System Analyst Manager | 16h | 5,120 | 5,120 |
| 18 | 1.1.4 | **Agile planning** | 24d | 2021-07-26 | 2021-08-26 |  | 2020-12-14 | 2021-01-18 | 26d | 60d |  |  |  | 192h | 61,440 | 66,560 |
| 19 | 1.1.4.1 | Assign Team | 2d | 2021-07-26 | 2021-07-27 | 17 | 2020-12-14 | 2020-12-15 | 2d | 60d | 0d |  | Demand Manager | 16h | 5,120 | 5,120 |
| 20 | 1.1.4.2 | Create Release Plan | 5d | 2021-07-28 | 2021-08-03 | 19 | 2020-12-16 | 2020-12-22 | 5d | 60d | 0d |  | Demand Manager | 40h | 12,800 | 12,800 |
| 21 | 1.1.4.3 | Backlog Grooming | 5d | 2021-08-04 | 2021-08-10 | 20 | 2020-12-27 | 2020-12-31 | 5d | 60d | 0d |  | System Analyst | 40h | 12,800 | 12,800 |
| 22 | 1.1.4.4 | Establish Test Plan | 3d | 2021-08-11 | 2021-08-15 | 21 | 2021-01-03 | 2021-01-05 | 3d | 60d | 0d |  | Tester | 24h | 7,680 | 7,680 |
| 23 | 1.1.4.5 | Review Test Plan | 2d | 2021-08-16 | 2021-08-17 | 22 | 2021-01-06 | 2021-01-07 | 2d | 60d | 0d |  | Test Team Leader | 16h | 5,120 | 5,120 |
| 24 | 1.1.4.6 | Create Test cases | 5d | 2021-08-18 | 2021-08-24 | 23 | 2021-01-10 | 2021-01-14 | 5d | 60d | 0d |  | Tester | 40h | 12,800 | 12,800 |
| 25 | 1.1.4.7 | Review Test Cases | 2d | 2021-08-25 | 2021-08-26 | 24 | 2021-01-17 | 2021-01-18 | 2d | 60d | 0d |  | Test Team Leader | 16h | 5,120 | 5,120 |

| ID | WBS | Task | Duration | Start | Finish | Predecessors | Baseline start | Baseline finish | Baseline duration | Total slack | Free slack | Resources | Work | Cost | Baseline cost |
| --- | --- | --- | --- | --- | --- | --- | --- | --- | --- | --- | --- | --- | --- | --- | --- |
| 26 | 1.1.5 | **Complete Phase Closing** | 6d | 2021-08-29 | 2021-09-05 |  | 2021-01-19 | 2021-01-26 | 6d | 60d |  |  | 48h | 15,360 | 15,360 |
| 27 | 1.1.5.1 | Perform Quality Assurance Audit_Envision | 2d | 2021-08-29 | 2021-08-30 | 25 | 2021-01-19 | 2021-01-20 | 2d | 60d | 0d | QA | 16h | 5,120 | 5,120 |
| 28 | 1.1.5.2 | Perform Configuration Audit_Envision | 2d | 2021-08-31 | 2021-09-01 | 27 | 2021-01-21 | 2021-01-24 | 2d | 60d | 0d | Configuration Controller | 16h | 5,120 | 5,120 |
| 29 | 1.1.5.3 | Baseline Configuration Items_Envision | 1d | 2021-09-02 | 2021-09-02 | 28 | 2021-01-25 | 2021-01-25 | 1d | 60d | 0d | Configuration Controller | 8h | 2,560 | 2,560 |
| 30 | 1.1.5.4 | Close-Out Phase_Envision | 1d | 2021-09-05 | 2021-09-05 | 29 | 2021-01-26 | 2021-01-26 | 1d | 60d | 0d | PM | 8h | 2,560 | 2,560 |
| 31 | 1.2 | **Agile Building** | 271d | 2020-11-01 | 2021-11-23 |  | 2021-01-27 | 2021-04-25 | 63d | 18d |  |  | 1058h | 338,560 | 1,144,000 |
| 32 | 1.2.1 | **Release (1)** | 15d | 2021-09-06 | 2021-09-26 |  | 2021-01-27 | 2021-02-16 | 15d | 60d |  |  | 978h | 312,960 | 306,560 |
| 33 | 1.2.1.1 | **Sprint (1)** | 5d | 2021-09-06 | 2021-09-12 |  | 2021-01-27 | 2021-02-02 | 5d | 60d |  |  | 340h | 108,800 | 102,400 |
| 34 | 1.2.1.1.1 | Sprint Planning | 5d | 2021-09-06 | 2021-09-12 | 30 | 2021-01-27 | 2021-02-02 | 5d | 70d |  | Demand Manager | 10h | 3,200 | 3,200 |
| 35 | 1.2.1.1.2 | **Sprint Execution** | 5d | 2021-09-06 | 2021-09-12 |  | 2021-01-27 | 2021-02-02 | 5d | 70d |  |  | 280h | 89,600 | 83,200 |
| 36 | 1.2.1.1.2.1 | Design | 5d | 2021-09-06 | 2021-09-12 | 30 | 2021-01-27 | 2021-02-02 | 5d | 70d |  | Designer Team Leader | 40h | 12,800 | 12,800 |
| 37 | 1.2.1.1.2.2 | UX / UI | 5d | 2021-09-06 | 2021-09-12 | 30 | 2021-01-27 | 2021-02-02 | 5d | 70d |  | UI/UX | 40h | 12,800 | 12,800 |
| 38 | 1.2.1.1.2.3 | DBA | 5d | 2021-09-06 | 2021-09-12 | 30 | 2021-01-27 | 2021-02-02 | 5d | 70d |  | DBA | 40h | 12,800 | 12,800 |
| 39 | 1.2.1.1.2.4 | Development | 5d | 2021-09-06 | 2021-09-12 | 30 | 2021-01-27 | 2021-02-02 | 5d | 70d |  | Developer | 40h | 12,800 | 12,800 |
| 40 | 1.2.1.1.2.5 | QC Test | 5d | 2021-09-06 | 2021-09-12 | 30 | 2021-01-27 | 2021-02-02 | 5d | 70d |  | Tester | 40h | 12,800 | 12,800 |
| 41 | 1.2.1.1.2.6 | Perform Unit test and Code Review | 5d | 2021-09-06 | 2021-09-12 | 30 | 2021-01-27 | 2021-02-02 | 5d | 70d |  | Developer | 40h | 12,800 | 6,400 |
| 42 | 1.2.1.1.2.7 | Promote to Test | 5d | 2021-09-06 | 2021-09-12 | 30 | 2021-01-27 | 2021-02-02 | 5d | 70d |  | Configuration Controller | 40h | 12,800 | 12,800 |
| 43 | 1.2.1.1.3 | Sprint Review | 5d | 2021-09-06 | 2021-09-12 | 30 | 2021-01-27 | 2021-02-02 | 5d | 70d |  | System Analyst | 40h | 12,800 | 12,800 |
| 44 | 1.2.1.1.4 | Sprint Retrospective | 5d | 2021-09-06 | 2021-09-12 | 30 | 2021-01-27 | 2021-02-02 | 5d | 60d | 0d | Demand Manager | 10h | 3,200 | 3,200 |
| 45 | 1.2.1.2 | **Sprint (2)** | 5d | 2021-09-13 | 2021-09-19 |  | 2021-02-03 | 2021-02-09 | 5d | 60d |  |  | 320h | 102,400 | 102,400 |
| 46 | 1.2.1.2.1 | Sprint Planning | 5d | 2021-09-13 | 2021-09-19 | 44 | 2021-02-03 | 2021-02-09 | 5d | 69d |  | Demand Manager | 12h | 3,840 | 3,840 |
| 47 | 1.2.1.2.2 | **Sprint Execution** | 5d | 2021-09-13 | 2021-09-19 |  | 2021-02-03 | 2021-02-09 | 5d | 65d |  |  | 249h | 79,680 | 79,680 |
| 48 | 1.2.1.2.2.1 | Design | 5d | 2021-09-13 | 2021-09-19 | 44 | 2021-02-03 | 2021-02-09 | 5d | 69d |  | Designer Team Leader | 40h | 12,800 | 12,800 |
| 49 | 1.2.1.2.2.2 | UX / UI | 5d | 2021-09-13 | 2021-09-19 | 44 | 2021-02-03 | 2021-02-09 | 5d | 69d |  | UI/UX | 40h | 12,800 | 12,800 |
| 50 | 1.2.1.2.2.3 | DBA | 5d | 2021-09-13 | 2021-09-19 | 44 | 2021-02-03 | 2021-02-09 | 5d | 69d |  | DBA | 40h | 12,800 | 12,800 |
| 51 | 1.2.1.2.2.4 | Development | 5d | 2021-09-13 | 2021-09-19 | 44 | 2021-02-03 | 2021-02-09 | 5d | 69d |  | Developer | 40h | 12,800 | 12,800 |
| 52 | 1.2.1.2.2.5 | QA Test | 5d | 2021-09-13 | 2021-09-19 | 44 | 2021-02-03 | 2021-02-09 | 5d | 69d |  | Tester | 40h | 12,800 | 12,800 |
| 53 | 1.2.1.2.2.6 | Perform Code Review | 5d | 2021-09-13 | 2021-09-19 | 44 | 2021-02-03 | 2021-02-09 | 5d | 69d |  | Demand Manager | 9h | 2,880 | 2,880 |
| 54 | 1.2.1.2.2.7 | Promote to Test | 5d | 2021-09-13 | 2021-09-19 | 44 | 2021-02-03 | 2021-02-09 | 5d | 69d |  | Configuration Controller | 40h | 12,800 | 12,800 |
| 55 | 1.2.1.2.3 | Sprint Review | 5d | 2021-09-13 | 2021-09-19 | 44 | 2021-02-03 | 2021-02-09 | 5d | 69d |  | System Analyst | 40h | 12,800 | 12,800 |
| 56 | 1.2.1.2.4 | Sprint Retrospective | 5d | 2021-09-13 | 2021-09-19 | 44 | 2021-02-03 | 2021-02-09 | 5d | 60d | 0d | Demand Manager | 19h | 6,080 | 6,080 |

| ID | WBS | Task | Type | Duration | Start | Finish | Predecessors | Baseline start | Baseline finish | Baseline duration | Total slack | Free slack | Resources | Work | Cost | Baseline cost |
| --- | --- | --- | --- | --- | --- | --- | --- | --- | --- | --- | --- | --- | --- | --- | --- | --- |
| 57 | 1.2.1.3 | **Sprint (3)** |  | 5d | 2021-09-20 | 2021-09-26 |  | 2021-02-10 | 2021-02-16 | 5d | 60d |  |  | 318h | 101,760 | 101,760 |
| 58 | 1.2.1.3.1 | Sprint Planning |  | 5d | 2021-09-20 | 2021-09-26 | 56 | 2021-02-10 | 2021-02-16 | 5d | 64d |  | Demand Manager | 16h | 5,120 | 5,120 |
| 59 | 1.2.1.3.2 | **Sprint Execution** |  | 5d | 2021-09-20 | 2021-09-26 |  | 2021-02-10 | 2021-02-16 | 5d | 60d |  |  | 250h | 80,000 | 80,000 |
| 60 | 1.2.1.3.2.1 | Design |  | 5d | 2021-09-20 | 2021-09-26 | 56 | 2021-02-10 | 2021-02-16 | 5d | 64d |  | Designer Team Leader | 40h | 12,800 | 12,800 |
| 61 | 1.2.1.3.2.2 | UX / UI |  | 5d | 2021-09-20 | 2021-09-26 | 56 | 2021-02-10 | 2021-02-16 | 5d | 64d |  | UI/UX | 40h | 12,800 | 12,800 |
| 62 | 1.2.1.3.2.3 | DBA |  | 5d | 2021-09-20 | 2021-09-26 | 56 | 2021-02-10 | 2021-02-16 | 5d | 64d |  | DBA | 40h | 12,800 | 12,800 |
| 63 | 1.2.1.3.2.4 | Development |  | 5d | 2021-09-20 | 2021-09-26 | 56 | 2021-02-10 | 2021-02-16 | 5d | 64d |  | Developer | 40h | 12,800 | 12,800 |
| 64 | 1.2.1.3.2.5 | QA Test |  | 5d | 2021-09-20 | 2021-09-26 | 56 | 2021-02-10 | 2021-02-16 | 5d | 64d |  | Tester | 40h | 12,800 | 12,800 |
| 65 | 1.2.1.3.2.6 | Perform Code Review |  | 5d | 2021-09-20 | 2021-09-26 | 56 | 2021-02-10 | 2021-02-16 | 5d | 64d |  | Demand Manager | 10h | 3,200 | 3,200 |
| 66 | 1.2.1.3.2.7 | Promote to Test |  | 5d | 2021-09-20 | 2021-09-26 | 56 | 2021-02-10 | 2021-02-16 | 5d | 64d |  | Configuration Controller | 40h | 12,800 | 12,800 |
| 67 | 1.2.1.3.3 | Sprint Review |  | 5d | 2021-09-20 | 2021-09-26 | 56 | 2021-02-10 | 2021-02-16 | 5d | 64d |  | System Analyst | 40h | 12,800 | 12,800 |
| 68 | 1.2.1.3.4 | Sprint Retrospective |  | 5d | 2021-09-20 | 2021-09-26 | 56 | 2021-02-10 | 2021-02-16 | 5d | 60d |  | Demand Manager | 12h | 3,840 | 3,840 |
| 69 | 1.2.2 | Promote Build To Staging environment | manual | 2d | 2021-11-22 | 2021-11-23 |  |  |  |  |  |  | Configuration Controller | 16h | 5,120 |  |
| 70 | 1.2.3 | **Phase Closing** |  | 8d | 2020-11-01 | 2020-11-10 |  | 2021-04-14 | 2021-04-25 | 8d | 281d |  |  | 64h | 20,480 | 20,480 |
| 71 | 1.2.3.1 | Perform Quality Assurance Audit_ Agile Building |  | 3d | 2020-11-01 | 2020-11-03 |  | 2021-04-14 | 2021-04-18 | 3d | 281d | 0d | QA | 24h | 7,680 | 7,680 |
| 72 | 1.2.3.2 | Perform Configuration Audit_ Agile Building |  | 2d | 2020-11-04 | 2020-11-05 | 71 | 2021-04-19 | 2021-04-20 | 2d | 281d | 0d | Configuration Controller | 16h | 5,120 | 5,120 |
| 73 | 1.2.3.3 | Baseline Configuration Items_ Agile Building |  | 1d | 2020-11-08 | 2020-11-08 | 72 | 2021-04-21 | 2021-04-21 | 1d | 281d | 0d | Configuration Controller | 8h | 2,560 | 2,560 |
| 74 | 1.2.3.4 | Close-Out Phase_ Agile Building |  | 2d | 2020-11-09 | 2020-11-10 | 73 | 2021-04-22 | 2021-04-25 | 2d | 281d |  | PM | 16h | 5,120 | 5,120 |
| 75 | 1.3 | **Closing** |  | 16d | 2021-11-24 | 2021-12-15 |  | 2021-04-26 | 2021-05-19 | 14d | 0d |  |  | 144h | 46,080 | 35,840 |
| 76 | 1.3.1 | Develop User Manual |  | 3d | 2021-11-24 | 2021-11-28 | 69 | 2021-04-26 | 2021-04-28 | 3d | 0d |  | System Analyst | 24h | 7,680 | 7,680 |
| 77 | 1.3.2 | Promote to PreProduction | manual | 1d | 2021-11-24 | 2021-11-24 |  |  |  |  |  |  | Configuration Controller | 8h | 2,560 |  |
| 78 | 1.3.3 | Performe user acceptance test | manual | 1d | 2021-11-24 | 2021-11-24 |  |  |  |  |  |  | PM | 8h | 2,560 |  |
| 79 | 1.3.4 | Verify Product Quality "Defect Analysis Report" |  | 3d | 2021-11-29 | 2021-12-01 | 76 | 2021-04-29 | 2021-05-03 | 3d | 0d |  | QA | 24h | 7,680 | 7,680 |
| 80 | 1.3.5 | Promote Build To Ptoduction | manual | 2d | 2021-12-02 | 2021-12-05 | 79 |  |  |  |  |  | Configuration Controller | 16h | 5,120 |  |

| ID | WBS | Task | Duration | Start | Finish | Predecessors | Baseline start | Baseline finish | Baseline duration | Total slack | Resources | Work | Cost | Baseline cost |
| --- | --- | --- | --- | --- | --- | --- | --- | --- | --- | --- | --- | --- | --- | --- |
| 81 | 1.3.6 | **Phase Closing** | 8d | 2021-12-06 | 2021-12-15 |  | 2021-05-04 | 2021-05-19 | 8d | 0d |  | 64h | 20,480 | 20,480 |
| 82 | 1.3.6.1 | Perform Quality Assurance Audit_Closing | 3d | 2021-12-06 | 2021-12-08 | 80 | 2021-05-04 | 2021-05-06 | 3d | 0d | QA | 24h | 7,680 | 7,680 |
| 83 | 1.3.6.2 | Perform Configuration Audit_Closing | 2d | 2021-12-09 | 2021-12-12 | 82 | 2021-05-09 | 2021-05-10 | 2d | 0d | Configuration Controller | 16h | 5,120 | 5,120 |
| 84 | 1.3.6.3 | Baseline Configuration Items_Closing | 1d | 2021-12-13 | 2021-12-13 | 83 | 2021-05-11 | 2021-05-11 | 1d | 0d | Configuration Controller | 8h | 2,560 | 2,560 |
| 85 | 1.3.6.4 | Close-Out Phase_Closing | 2d | 2021-12-14 | 2021-12-15 | 84 | 2021-05-18 | 2021-05-19 | 2d | 0d | PM | 16h | 5,120 | 5,120 |
| 86 | 1.4 | Close-Out Project | 2d | 2021-12-16 | 2021-12-19 | 85 | 2021-05-20 | 2021-05-23 | 2d | 0d | PMO | 16h | 5,120 | 5,120 |
